# P007_SISTEMA_KARCE

Schedule from MS Project, 2025-06-02 to 2025-06-24, status date 2025-06-02, 9 hours a day, A marks actual dates.

## Calendars

- CALENDARIO_MAHO_2025: Mon-Thu 08:30-13:00, 14:00-17:30; Fri 08:30-13:00, 14:00-16:30; Sat-Sun off. Exceptions (off unless hours are given): 2025-06-20 (Día Nacional de los Pueblos Indígenas).

## Resources

| Resource | Group |
| --- | --- |
| Mario Morales | Formulador |
| Neil Flores | Topografo |
| Tamara Barraza | Arquitecto |
| Emanuel Busto | Ingeniero Constructor |
| Williams Opazo | Constructor Civil |
| David Gonzales | Ingeniero Electrico |
| Jason Apablaza | Ingeniero Civil |

## Schedule

| ID | WBS | Task | Duration | Start | Finish | Predecessors | Complete | Remaining | Baseline start | Baseline finish | Baseline duration | Total slack | Free slack | Constraint | Resources | Work | Actual work | Text1 | Text3 | Text10 |
| --- | --- | --- | --- | --- | --- | --- | --- | --- | --- | --- | --- | --- | --- | --- | --- | --- | --- | --- | --- | --- |
| 1 | 1 | **P007 - REPOSICIÓN SEDE SOCIAL JV KATHERINE ARCE PRB BARRIO KATHERINE ARCE-SANTA ROSA** | 14d | 2025-06-02 A | 2025-06-24 |  | 11% | 12.44d | 2025-06-02 | 2025-06-23 | 13d | 0d |  |  |  | 1692h | 570.96h | 10,99 | A tiempo | P007 |
| 2 | 1.1 | **FORMULACION DE PROYECTO** | 14d | 2025-06-02 A | 2025-06-24 |  |  | 14d | 2025-06-02 | 2025-06-23 | 13d | 0d |  |  | Mario Morales | 324h | 234h | 55,56 | A tiempo | P007 |
| 3 | 1.1.1 | **DOCUMENTOS** | 14d | 2025-06-02 A | 2025-06-24 |  |  | 14d | 2025-06-02 | 2025-06-23 | 13d | 0d |  |  | Mario Morales | 198h | 117h | 55,56 | A tiempo | P007 |
| 4 | 1.1.1.1 | Formulario Presentacion de Proyecto FRIL | 3d | 2025-06-18 | 2025-06-24 | 10, 59, 26, 36, 48, 65 |  |  | 2025-06-17 | 2025-06-23 | 3d | 0d |  | as late as possible | Mario Morales | 27h |  |  | Tarea futura | P007 |
| 5 | 1.1.1.2 | Compromiso de Mantencion y Gastos Operacionales | 1d | 2025-06-02 | 2025-06-03 |  |  |  | 2025-06-02 | 2025-06-02 | 0d | 13d |  |  | Mario Morales | 9h |  | 88,89 | A tiempo | P007 |
| 6 | 1.1.1.3 | Certificado Dominio Vigente | 1d | 2025-06-02 | 2025-06-03 |  |  |  | 2025-06-02 | 2025-06-02 | 0d | 9d | 0d |  | Mario Morales | 9h |  | 88,89 | A tiempo | P007 |
| 7 | 1.1.1.4 | Certificado de Numero | 1d | 2025-06-02 | 2025-06-03 |  |  |  | 2025-06-02 | 2025-06-02 | 0d | 9d | 0d |  | Mario Morales | 9h |  | 88,89 | A tiempo | P007 |
| 8 | 1.1.1.5 | Certificado de Informes Previos | 1d | 2025-06-02 | 2025-06-03 |  |  |  | 2025-06-02 | 2025-06-02 | 0d | 13d |  |  | Mario Morales | 9h |  | 88,89 | A tiempo | P007 |
| 9 | 1.1.1.6 | Documentos Varios | 1d | 2025-06-02 | 2025-06-03 |  |  |  | 2025-06-02 | 2025-06-02 | 0d | 13d |  |  | Mario Morales | 9h |  | 88,89 | A tiempo | P007 |
| 10 | 1.2 | **ARQUITECTURA** | 9d | 2025-06-02 A | 2025-06-16 |  | 8% | 8.24d | 2025-06-02 | 2025-06-13 | 8d | 2d |  |  | Tamara Barraza | 432h | 154.8h | 3,42 | A tiempo | P007 |
| 11 | 1.2.1 | **DOCUMENTOS** | 5d | 2025-06-06 | 2025-06-16 |  |  |  | 2025-06-05 | 2025-06-13 | 5d | 2d |  |  | Tamara Barraza | 81h |  |  | Tarea futura | P007 |
| 12 | 1.2.1.1 | Relleno de Formulario DOM AP (Ingreso DOM) | 1d | 2025-06-12 | 2025-06-13 | 16, 17, 18, 19, 20, 21, 22, 23, 24 |  |  | 2025-06-10 | 2025-06-11 | 1d | 3d |  |  | Tamara Barraza | 9h |  |  | Tarea futura | P007 |
| 13 | 1.2.1.2 | Especifiaciones Tecnicas - Arquitectura | 2d | 2025-06-12 | 2025-06-16 | 16, 17, 18, 19, 20, 21, 22, 23, 24 |  |  | 2025-06-10 | 2025-06-13 | 2d | 2d |  |  | Tamara Barraza | 18h |  |  | Tarea futura | P007 |
| 14 | 1.2.1.3 | Memoria de Diseño universal | 1d | 2025-06-06 | 2025-06-09 | 19 |  |  | 2025-06-05 | 2025-06-06 | 1d | 6d |  |  | Tamara Barraza | 9h |  |  | Tarea futura | P007 |
| 15 | 1.2.2 | **ANTECEDENTES** | 8d | 2025-06-02 A | 2025-06-13 |  | 10% | 7.2d | 2025-06-02 | 2025-06-11 | 7d | 0d |  |  | Tamara Barraza | 270h | 82.8h | 4,05 | A tiempo | P007 |
| 16 | 1.2.2.1 | Plano Lamina Normativa - Emplazamiento | 1d | 2025-06-03 | 2025-06-04 | 17 |  |  | 2025-06-02 | 2025-06-02 | 0d | 5.2d | 5d |  | Tamara Barraza | 9h |  |  | Tarea futura | P007 |
| 17 | 1.2.2.2 | Pano Planta de Arquitectura 1/50 - Todos los Pisos | 1d | 2025-06-02 A | 2025-06-03 A |  | 100% |  | 2025-06-02 | 2025-06-02 | 0d |  |  |  | Tamara Barraza | 9h | 9h | 88,89 | A tiempo | P007 |
| 18 | 1.2.2.3 | Plano Secciones y Elevaciones 1/50 | 1d | 2025-06-03 A | 2025-06-04 A | 17 | 100% |  | 2025-06-02 | 2025-06-02 | 0d |  |  |  | Tamara Barraza | 9h | 9h |  | Tarea futura | P007 |
| 19 | 1.2.2.4 | Plano de Accesibilidad Universal | 3d | 2025-06-03 | 2025-06-06 | 17 |  |  | 2025-06-02 | 2025-06-05 | 3d | 3.2d | 0d |  | Tamara Barraza | 27h |  |  | Tarea futura | P007 |
| 20 | 1.2.2.5 | Plano Detalle de Puerta y Ventana | 3d | 2025-06-03 | 2025-06-06 | 17 |  |  | 2025-06-02 | 2025-06-05 | 3d | 0.2d | 0d |  | Tamara Barraza | 27h |  |  | Tarea futura | P007 |
| 21 | 1.2.2.6 | Plano Detalle de Areas Humedas | 3d | 2025-06-03 | 2025-06-06 | 17 |  |  | 2025-06-02 | 2025-06-05 | 3d | 3.2d | 3d |  | Tamara Barraza | 27h |  |  | Tarea futura | P007 |
| 22 | 1.2.2.7 | Plano Detalles Constructivos | 3d | 2025-06-06 | 2025-06-11 | 20 |  |  | 2025-06-05 | 2025-06-10 | 3d | 0.2d | 0d |  | Tamara Barraza | 27h |  |  | Tarea futura | P007 |
| 23 | 1.2.2.8 | Plano Detalle de Cierre Perimetral | 3d | 2025-06-06 | 2025-06-11 | 20 |  |  | 2025-06-05 | 2025-06-10 | 3d | 0.2d | 0d |  | Tamara Barraza | 27h |  |  | Tarea futura | P007 |
| 24 | 1.2.2.9 | Plano Detalles Complementarios | 3d | 2025-06-06 | 2025-06-11 | 20 |  |  | 2025-06-05 | 2025-06-10 | 3d | 0.2d | 0d |  | Tamara Barraza | 27h |  |  | Tarea futura | P007 |
| 25 | 1.2.2.10 | Armado de Laminas Presentacion | 1d | 2025-06-12 A | 2025-06-13 | 16, 17, 18, 19, 20, 21, 22, 23, 24 | 20% | 0.8d | 2025-06-10 | 2025-06-11 | 1d | 0d |  |  | Tamara Barraza | 9h | 1.8h |  | Tarea futura | P007 |

| ID | WBS | Task | Duration | Start | Finish | Predecessors | Complete | Remaining | Baseline start | Baseline finish | Baseline duration | Total slack | Free slack | Resources | Work | Actual work | Text1 | Text3 | Text10 |
| --- | --- | --- | --- | --- | --- | --- | --- | --- | --- | --- | --- | --- | --- | --- | --- | --- | --- | --- | --- |
| 26 | 1.3 | **ESTRUCTURA** | 4d | 2025-06-02 | 2025-06-06 |  |  |  | 2025-06-02 | 2025-06-05 | 3d | 0d |  | Jason Apablaza | 189h | 54h | 8,1 | A tiempo | P007 |
| 27 | 1.3.1 | **DOCUMENTOS** | 4d | 2025-06-02 | 2025-06-06 |  |  |  | 2025-06-02 | 2025-06-05 | 3d | 0d | 7d | Jason Apablaza | 63h | 27h | 29,63 | A tiempo | P007 |
| 28 | 1.3.1.1 | Memoria de Calculo | 1d | 2025-06-05 | 2025-06-06 | 32, 33, 34, 35 |  |  | 2025-06-04 | 2025-06-05 | 1d | 7d |  | Jason Apablaza | 9h |  |  | Tarea futura | P007 |
| 29 | 1.3.1.2 | Especificaciones Tecnicas - Estructura | 1d | 2025-06-05 | 2025-06-06 | 32, 33, 34, 35 |  |  | 2025-06-04 | 2025-06-05 | 1d | 7d |  | Jason Apablaza | 9h |  |  | Tarea futura | P007 |
| 30 | 1.3.1.3 | Mecanica de Suelo | 1d | 2025-06-02 | 2025-06-03 |  |  |  | 2025-06-02 | 2025-06-02 | 0d | 10d |  | Jason Apablaza | 9h |  | 88,89 | A tiempo | P007 |
| 31 | 1.3.2 | **ANTECEDENTES** | 2d | 2025-06-03 | 2025-06-05 |  |  |  | 2025-06-02 | 2025-06-04 | 2d | 5d |  | Jason Apablaza | 90h |  |  | Tarea futura | P007 |
| 32 | 1.3.2.1 | Plano Planta de Fundacion 1/50 - Detalles | 2d | 2025-06-03 | 2025-06-05 | 17 |  |  | 2025-06-02 | 2025-06-04 | 2d | 5d | 0d | Jason Apablaza | 18h |  |  | Tarea futura | P007 |
| 33 | 1.3.2.2 | Plano Planta de Estructura 1/50 Todos los Pisos - Detalles | 2d | 2025-06-03 | 2025-06-05 | 17 |  |  | 2025-06-02 | 2025-06-04 | 2d | 5d | 0d | Jason Apablaza | 18h |  |  | Tarea futura | P007 |
| 34 | 1.3.2.3 | Plano Planta de Estructura Cubierta - Detalles | 2d | 2025-06-03 | 2025-06-05 | 17 |  |  | 2025-06-02 | 2025-06-04 | 2d | 5d | 0d | Jason Apablaza | 18h |  |  | Tarea futura | P007 |
| 35 | 1.3.2.4 | Plano Elevaciones Ejes Estructurales | 2d | 2025-06-03 | 2025-06-05 | 17 |  |  | 2025-06-02 | 2025-06-04 | 2d | 5d | 0d | Jason Apablaza | 18h |  |  | Tarea futura | P007 |
| 36 | 1.4 | **SANITARIO** | 5d | 2025-06-03 A | 2025-06-10 |  | 45% | 2.74d | 2025-06-02 | 2025-06-09 | 5d | 5d |  | Emanuel Busto | 288h | 128.16h |  | Tarea futura | P007 |
| 37 | 1.4.1 | **DOCUMENTOS** | 5d | 2025-06-03 A | 2025-06-10 |  | 62% | 1.92d | 2025-06-02 | 2025-06-09 | 5d | 5d |  | Emanuel Busto | 162h | 99.69h |  | Tarea futura | P007 |
| 38 | 1.4.1.1 | Factibilidad Sanitaria (Tramitacion Solicitud) | 1d | 2025-06-03 | 2025-06-04 | 6, 7 |  |  | 2025-06-02 | 2025-06-03 | 1d | 9d |  | Emanuel Busto | 9h |  |  | Tarea futura | P007 |
| 39 | 1.4.1.2 | Memoria de Calculo | 2d | 2025-06-06 A | 2025-06-10 A | 46, 47 | 100% |  | 2025-06-05 | 2025-06-09 | 2d |  |  | Emanuel Busto | 18h | 18h |  | Tarea futura | P007 |
| 40 | 1.4.1.3 | Cuadro de Presion AP | 2d | 2025-06-06 A | 2025-06-10 A | 46, 47 | 100% |  | 2025-06-05 | 2025-06-09 | 2d |  |  | Emanuel Busto | 18h | 18h |  | Tarea futura | P007 |
| 41 | 1.4.1.4 | Especificaciones Tecnicas AP | 2d | 2025-06-06 A | 2025-06-10 A | 46, 47 | 100% |  | 2025-06-05 | 2025-06-09 | 2d |  |  | Emanuel Busto | 18h | 18h |  | Tarea futura | P007 |
| 42 | 1.4.1.5 | Especificaciones Tecnicas ALC | 2d | 2025-06-06 A | 2025-06-10 A | 46, 47 | 100% |  | 2025-06-05 | 2025-06-09 | 2d |  |  | Emanuel Busto | 18h | 18h |  | Tarea futura | P007 |
| 43 | 1.4.1.6 | Itemizado Seccion Sanitario | 2d | 2025-06-06 | 2025-06-10 | 46, 47 |  |  | 2025-06-05 | 2025-06-09 | 2d | 2d |  | Emanuel Busto | 18h |  |  | Tarea futura | P007 |
| 44 | 1.4.1.7 | APU Especialidad Sanitario | 2d | 2025-06-06 | 2025-06-10 | 46, 47 |  |  | 2025-06-05 | 2025-06-09 | 2d | 5d |  | Emanuel Busto | 18h |  |  | Tarea futura | P007 |
| 45 | 1.4.2 | **ANTECEDENTES** | 3d | 2025-06-03 A | 2025-06-06 |  | 10% | 2.7d | 2025-06-02 | 2025-06-05 | 3d | 2d |  | Emanuel Busto | 81h | 8.1h |  | Tarea futura | P007 |
| 46 | 1.4.2.1 | Plano Planta de Distribusion AP-AF - Todos los Pisos - Detalles | 3d | 2025-06-03 A | 2025-06-06 | 17 | 10% | 2.7d | 2025-06-02 | 2025-06-05 | 3d | 2d | 0d | Emanuel Busto | 27h | 2.7h |  | Tarea futura | P007 |
| 47 | 1.4.2.2 | Plano Planta de Distribucion ALC - Todos los Pisos - Detalles | 3d | 2025-06-03 A | 2025-06-06 | 17 | 10% | 2.7d | 2025-06-02 | 2025-06-05 | 3d | 2d | 0d | Emanuel Busto | 27h | 2.7h |  | Tarea futura | P007 |
| 48 | 1.5 | **ELECTRICO** | 5d | 2025-06-02 | 2025-06-09 |  |  |  | 2025-06-02 | 2025-06-09 | 5d | 3d |  | David Gonzales | 261h |  | 14,04 | A tiempo | P007 |
| 49 | 1.5.1 | **DOCUMENTOS** | 2d | 2025-06-05 | 2025-06-09 |  |  |  | 2025-06-05 | 2025-06-09 | 2d | 3d |  | David Gonzales | 108h |  |  | Tarea futura | P007 |
| 50 | 1.5.1.1 | Factibilidad Electrica (Tramitacion Solicitud) | 2d | 2025-06-05 | 2025-06-09 | 56, 57, 58 |  |  | 2025-06-05 | 2025-06-09 | 2d | 6d |  | David Gonzales | 18h |  |  | Tarea futura | P007 |
| 51 | 1.5.1.2 | Memoria de Calculo | 2d | 2025-06-05 | 2025-06-09 | 56, 57, 58 |  |  | 2025-06-05 | 2025-06-09 | 2d | 6d |  | David Gonzales | 18h |  |  | Tarea futura | P007 |
| 52 | 1.5.1.3 | Especificaciones Tecnicas ELEC | 2d | 2025-06-05 | 2025-06-09 | 56, 57, 58 |  |  | 2025-06-05 | 2025-06-09 | 2d | 6d |  | David Gonzales | 18h |  |  | Tarea futura | P007 |
| 53 | 1.5.1.4 | Itemizado Seccion Electricidad | 2d | 2025-06-05 | 2025-06-09 | 56, 57, 58 |  |  | 2025-06-05 | 2025-06-09 | 2d | 3d |  | David Gonzales | 18h |  |  | Tarea futura | P007 |
| 54 | 1.5.1.5 | APU Especialidad Electricidad | 2d | 2025-06-05 | 2025-06-09 | 56, 57, 58 |  |  | 2025-06-05 | 2025-06-09 | 2d | 6d |  | David Gonzales | 18h |  |  | Tarea futura | P007 |

| ID | WBS | Task | Duration | Start | Finish | Predecessors | Baseline start | Baseline finish | Baseline duration | Total slack | Free slack | Resources | Work | Text1 | Text3 | Text10 |
| --- | --- | --- | --- | --- | --- | --- | --- | --- | --- | --- | --- | --- | --- | --- | --- | --- |
| 55 | 1.5.2 | **ANTECEDENTES** | 3d | 2025-06-02 | 2025-06-05 |  | 2025-06-02 | 2025-06-05 | 3d | 3d |  | David Gonzales | 108h | 29,63 | A tiempo | P007 |
| 56 | 1.5.2.1 | Plano Planta de Alumbrado (Circuito y Canalizacion) - Todos los Pisos - Detalles | 3d | 2025-06-02 | 2025-06-05 |  | 2025-06-02 | 2025-06-05 | 3d | 3d | 0d | David Gonzales | 27h | 29,63 | A tiempo | P007 |
| 57 | 1.5.2.2 | Plano Planta de Enchufe (Circuito y Canalizacion) - Todos los Pisos - Detalles | 3d | 2025-06-02 | 2025-06-05 |  | 2025-06-02 | 2025-06-05 | 3d | 3d | 0d | David Gonzales | 27h | 29,63 | A tiempo | P007 |
| 58 | 1.5.2.3 | Plano Detalle Esquema Unifilar - Cuadro de Carga | 3d | 2025-06-02 | 2025-06-05 |  | 2025-06-02 | 2025-06-05 | 3d | 3d | 0d | David Gonzales | 27h | 29,63 | A tiempo | P007 |
| 59 | 1.6 | **PRESUPUESTO** | 3d | 2025-06-13 | 2025-06-18 |  | 2025-06-12 | 2025-06-17 | 3d | 0d |  | Williams Opazo | 162h |  | Tarea futura | P007 |
| 60 | 1.6.1 | **DOCUMENTOS** | 3d | 2025-06-13 | 2025-06-18 |  | 2025-06-12 | 2025-06-17 | 3d | 0d |  | Williams Opazo | 135h |  | Tarea futura | P007 |
| 61 | 1.6.1.1 | APU - Generales | 3d | 2025-06-13 | 2025-06-18 | 15, 31, 43, 53 | 2025-06-12 | 2025-06-17 | 3d | 0d |  | Williams Opazo | 27h |  | Tarea futura | P007 |
| 62 | 1.6.1.2 | Itemizado Presupeusto Alternativa A | 3d | 2025-06-13 | 2025-06-18 | 15, 31, 43, 53 | 2025-06-12 | 2025-06-17 | 3d | 0d |  | Williams Opazo | 27h |  | Tarea futura | P007 |
| 63 | 1.6.1.3 | Itemizado Presupeusto Alternativa B | 3d | 2025-06-13 | 2025-06-18 | 15, 31, 43, 53 | 2025-06-12 | 2025-06-17 | 3d | 0d |  | Williams Opazo | 27h |  | Tarea futura | P007 |
| 64 | 1.6.1.4 | Programa de Ejecucion - Plazo Estimado | 3d | 2025-06-13 | 2025-06-18 | 15, 31, 43, 53 | 2025-06-12 | 2025-06-17 | 3d | 0d |  | Williams Opazo | 27h |  | Tarea futura | P007 |
| 65 | 1.7 | **TOPOGRAFIA** | 1d | 2025-06-02 | 2025-06-03 |  | 2025-06-02 | 2025-06-02 | 0d | 10d |  | Neil Flores | 36h | 88,89 | A tiempo | P007 |
| 66 | 1.7.1 | **ANTECEDENTE** | 1d | 2025-06-02 | 2025-06-03 |  | 2025-06-02 | 2025-06-02 | 0d | 10d |  | Neil Flores | 27h | 88,89 | A tiempo | P007 |
| 67 | 1.7.1.1 | Plano Planta Topografica Situacion Existente | 1d | 2025-06-02 | 2025-06-03 |  | 2025-06-02 | 2025-06-02 | 0d | 10d |  | Neil Flores | 9h | 88,89 | A tiempo | P007 |
| 68 | 1.7.1.2 | Secciones Perfiles Topograficos Situacion Existente | 1d | 2025-06-02 | 2025-06-03 |  | 2025-06-02 | 2025-06-02 | 0d | 10d |  | Neil Flores | 9h | 88,89 | A tiempo | P007 |
