# P007_SISTEMA_KARCE

Schedule from MS Project, 2025-06-02 to 2025-06-18, status date 2025-06-02, 9 hours a day, A marks actual dates.

## Calendars

- CALENDARIO_MAHO_2025: Mon-Thu 08:30-13:00, 14:00-17:30; Fri 08:30-13:00, 14:00-16:30; Sat-Sun off.

## Resources

| Resource | Group |
| --- | --- |
| Mario Morales | Formulador |
| Neil Flores | Topografo |
| Daniel Quian | Arquitecto |
| Williams Opazo | Constructor Civil |
| Sebastian Garcia | Ingeniero Electrico |
| Gonzalo Reyes | Ingeniero Civil |

## Schedule

| ID | WBS | Task | Duration | Start | Finish | Predecessors | Complete | Remaining | Baseline start | Baseline finish | Baseline duration | Total slack | Constraint | Resources | Work | Actual work | Text1 | Text3 | Text10 |
| --- | --- | --- | --- | --- | --- | --- | --- | --- | --- | --- | --- | --- | --- | --- | --- | --- | --- | --- | --- |
| 1 | 1 | **P011 - CONSTRUCCIÓN VÍA SEMIPEATONAL Y CRUCES PEATONALES PRB BARRIO CALICHE II Y III** | 11d | 2025-06-02 A | 2025-06-18 |  | 6% | 10.37d | 2025-06-02 | 2025-06-23 | 13d | 0d |  |  | 1143h | 54.73h | 18,94 | A tiempo | P011 |
| 2 | 1.1 | **FORMULACION DE PROYECTO** | 11d | 2025-06-02 | 2025-06-18 |  |  |  | 2025-06-02 | 2025-06-23 | 13d | 0d |  | Mario Morales | 270h |  | 55,56 | A tiempo | P011 |
| 3 | 1.1.1 | **DOCUMENTOS** | 11d | 2025-06-02 | 2025-06-18 |  |  |  | 2025-06-02 | 2025-06-23 | 13d | 0d |  | Mario Morales | 171h |  | 55,56 | A tiempo | P011 |
| 4 | 1.1.1.1 | Formulario Presentacion de Proyecto FRIL | 3d | 2025-06-13 | 2025-06-18 | 10, 40, 23, 30, 46 |  |  | 2025-06-17 | 2025-06-23 | 3d | 0d | as late as possible | Mario Morales | 27h |  |  | Tarea futura | P011 |
| 5 | 1.1.1.2 | Compromiso de Mantencion y Gastos Operacionales | 1d | 2025-06-02 | 2025-06-03 |  |  |  | 2025-06-02 | 2025-06-02 | 0d | 10d |  | Mario Morales | 9h |  | 88,89 | A tiempo | P011 |
| 6 | 1.1.1.3 | Certificado Dominio Vigente | 1d | 2025-06-02 | 2025-06-03 |  |  |  | 2025-06-02 | 2025-06-02 | 0d | 10d |  | Mario Morales | 9h |  | 88,89 | A tiempo | P011 |
| 7 | 1.1.1.4 | Certificado de Numero | 1d | 2025-06-02 | 2025-06-03 |  |  |  | 2025-06-02 | 2025-06-02 | 0d | 10d |  | Mario Morales | 9h |  | 88,89 | A tiempo | P011 |
| 8 | 1.1.1.5 | Certificado de Informes Previos | 1d | 2025-06-02 | 2025-06-03 |  |  |  | 2025-06-02 | 2025-06-02 | 0d | 10d |  | Mario Morales | 9h |  | 88,89 | A tiempo | P011 |
| 9 | 1.1.1.6 | Documentos Varios | 1d | 2025-06-02 | 2025-06-03 |  |  |  | 2025-06-02 | 2025-06-02 | 0d | 10d |  | Mario Morales | 9h |  | 88,89 | A tiempo | P011 |
| 10 | 1.2 | **ARQUITECTURA** | 6d | 2025-06-02 A | 2025-06-10 |  | 21% | 4.76d | 2025-06-02 | 2025-06-13 | 8d | 2d |  | Daniel Quian | 270h | 54.73h | 15,68 | A tiempo | P011 |
| 11 | 1.2.1 | **DOCUMENTOS** | 2d | 2025-06-06 | 2025-06-10 |  |  |  | 2025-06-05 | 2025-06-13 | 5d | 2d |  | Daniel Quian | 54h |  |  | Tarea futura | P011 |
| 12 | 1.2.1.1 | Relleno de Formulario DOM (Ingreso DOM) | 1d | 2025-06-06 | 2025-06-09 | 16, 17, 18, 19, 20, 21 |  |  | 2025-06-10 | 2025-06-11 | 1d | 3d |  | Daniel Quian | 9h |  |  | Tarea futura | P011 |
| 13 | 1.2.1.2 | Especifiaciones Tecnicas - Arquitectura | 2d | 2025-06-06 | 2025-06-10 | 16, 17, 18, 19, 20, 21 |  |  | 2025-06-10 | 2025-06-13 | 2d | 2d |  | Daniel Quian | 18h |  |  | Tarea futura | P011 |
| 14 | 1.2.1.3 | Memoria de Diseño universal | 1d | 2025-06-06 | 2025-06-09 | 19 |  |  | 2025-06-05 | 2025-06-06 | 1d | 3d |  | Daniel Quian | 9h |  |  | Tarea futura | P011 |
| 15 | 1.2.2 | **ANTECEDENTES** | 5d | 2025-06-02 A | 2025-06-09 |  | 27% | 3.65d | 2025-06-02 | 2025-06-11 | 7d | 0d |  | Daniel Quian | 162h | 43.61h | 20,52 | A tiempo | P011 |
| 16 | 1.2.2.1 | Plano Lamina Normativa - Emplazamiento | 1d | 2025-06-03 | 2025-06-04 | 17 |  |  | 2025-06-02 | 2025-06-02 | 0d | 2d |  | Daniel Quian | 9h |  |  | Tarea futura | P011 |
| 17 | 1.2.2.2 | Pano Planta de Arquitectura 1/50 - Todos los Pisos | 1d | 2025-06-02 A | 2025-06-03 A |  | 100% |  | 2025-06-02 | 2025-06-02 | 0d |  |  | Daniel Quian | 9h | 9h | 88,89 | A tiempo | P011 |
| 18 | 1.2.2.3 | Plano Secciones y Elevaciones 1/50 | 1d | 2025-06-03 A | 2025-06-04 A | 17 | 100% |  | 2025-06-02 | 2025-06-02 | 0d |  |  | Daniel Quian | 9h | 9h |  | Tarea futura | P011 |
| 19 | 1.2.2.4 | Plano de Accesibilidad Universal | 3d | 2025-06-03 | 2025-06-06 | 17 |  |  | 2025-06-02 | 2025-06-05 | 3d | 0d |  | Daniel Quian | 27h |  |  | Tarea futura | P011 |
| 20 | 1.2.2.5 | Plano Detalles Constructivos | 3d | 2025-06-02 A | 2025-06-05 |  | 25% | 2.25d | 2025-06-05 | 2025-06-10 | 3d | 1d |  | Daniel Quian | 27h | 6.75h | 29,63 | A tiempo | P011 |
| 21 | 1.2.2.6 | Plano Detalles Complementarios | 3d | 2025-06-02 A | 2025-06-05 |  | 25% | 2.25d | 2025-06-05 | 2025-06-10 | 3d | 1d |  | Daniel Quian | 27h | 6.75h | 29,63 | A tiempo | P011 |
| 22 | 1.2.2.7 | Armado de Laminas Presentacion | 1d | 2025-06-06 | 2025-06-09 | 16, 17, 18, 19, 20, 21 |  |  | 2025-06-10 | 2025-06-11 | 1d | 0d |  | Daniel Quian | 9h |  |  | Tarea futura | P011 |
| 23 | 1.3 | **ESTRUCTURA** | 5d | 2025-06-02 | 2025-06-09 |  |  |  | 2025-06-02 | 2025-06-05 | 3d | 2d |  | Gonzalo Reyes | 171h |  | 14,81 | A tiempo | P011 |
| 24 | 1.3.1 | **DOCUMENTOS** | 5d | 2025-06-02 | 2025-06-09 |  |  |  | 2025-06-02 | 2025-06-05 | 3d | 3d |  | Gonzalo Reyes | 72h |  | 29,63 | A tiempo | P011 |
| 25 | 1.3.1.1 | Memoria de Calculo | 1d | 2025-06-06 | 2025-06-09 | 29 |  |  | 2025-06-04 | 2025-06-05 | 1d | 3d |  | Gonzalo Reyes | 9h |  |  | Tarea futura | P011 |
| 26 | 1.3.1.2 | Especificaciones Tecnicas - Estructura | 1d | 2025-06-06 | 2025-06-09 | 29 |  |  | 2025-06-04 | 2025-06-05 | 1d | 3d |  | Gonzalo Reyes | 9h |  |  | Tarea futura | P011 |
| 27 | 1.3.1.3 | Mecanica de Suelo | 1d | 2025-06-02 | 2025-06-03 |  |  |  | 2025-06-02 | 2025-06-02 | 0d | 7d |  | Gonzalo Reyes | 9h |  | 88,89 | A tiempo | P011 |

| ID | WBS | Task | Duration | Start | Finish | Predecessors | Baseline start | Baseline finish | Baseline duration | Total slack | Free slack | Resources | Work | Text3 | Text10 | Text1 |
| --- | --- | --- | --- | --- | --- | --- | --- | --- | --- | --- | --- | --- | --- | --- | --- | --- |
| 28 | 1.3.2 | **ANTECEDENTES** | 3d | 2025-06-03 | 2025-06-06 |  | 2025-06-02 | 2025-06-04 | 2d | 1d |  | Gonzalo Reyes | 54h | Tarea futura | P011 |  |
| 29 | 1.3.2.1 | Plano Planta de Pavimento 1/50 - Detalles | 3d | 2025-06-03 | 2025-06-06 | 17 | 2025-06-02 | 2025-06-04 | 2d | 1d | 0d | Gonzalo Reyes | 27h | Tarea futura | P011 |  |
| 30 | 1.4 | **ELECTRICO** | 5d | 2025-06-02 | 2025-06-09 |  | 2025-06-02 | 2025-06-09 | 5d | 0d |  | Sebastian Garcia | 234h | A tiempo | P011 | 11,11 |
| 31 | 1.4.1 | **DOCUMENTOS** | 2d | 2025-06-05 | 2025-06-09 |  | 2025-06-05 | 2025-06-09 | 2d | 0d |  | Sebastian Garcia | 108h | Tarea futura | P011 |  |
| 32 | 1.4.1.1 | Factibilidad Electrica (Tramitacion Solicitud) | 2d | 2025-06-05 | 2025-06-09 | 38, 39 | 2025-06-05 | 2025-06-09 | 2d | 3d |  | Sebastian Garcia | 18h | Tarea futura | P011 |  |
| 33 | 1.4.1.2 | Memoria de Calculo | 2d | 2025-06-05 | 2025-06-09 | 38, 39 | 2025-06-05 | 2025-06-09 | 2d | 3d |  | Sebastian Garcia | 18h | Tarea futura | P011 |  |
| 34 | 1.4.1.3 | Especificaciones Tecnicas ELEC | 2d | 2025-06-05 | 2025-06-09 | 38, 39 | 2025-06-05 | 2025-06-09 | 2d | 3d |  | Sebastian Garcia | 18h | Tarea futura | P011 |  |
| 35 | 1.4.1.4 | Itemizado Seccion Electricidad | 2d | 2025-06-05 | 2025-06-09 | 38, 39 | 2025-06-05 | 2025-06-09 | 2d | 0d |  | Sebastian Garcia | 18h | Tarea futura | P011 |  |
| 36 | 1.4.1.5 | APU Especialidad Electricidad | 2d | 2025-06-05 | 2025-06-09 | 38, 39 | 2025-06-05 | 2025-06-09 | 2d | 3d |  | Sebastian Garcia | 18h | Tarea futura | P011 |  |
| 37 | 1.4.2 | **ANTECEDENTES** | 3d | 2025-06-02 | 2025-06-05 |  | 2025-06-02 | 2025-06-05 | 3d | 0d |  | Sebastian Garcia | 81h | A tiempo | P011 | 29,63 |
| 38 | 1.4.2.1 | Plano Planta de Alumbrado (Circuito y Canalizacion) - Todos los Pisos - Detalles | 3d | 2025-06-02 | 2025-06-05 |  | 2025-06-02 | 2025-06-05 | 3d | 0d |  | Sebastian Garcia | 27h | A tiempo | P011 | 29,63 |
| 39 | 1.4.2.2 | Plano Detalle Esquema Unifilar - Cuadro de Carga | 3d | 2025-06-02 | 2025-06-05 |  | 2025-06-02 | 2025-06-05 | 3d | 0d |  | Sebastian Garcia | 27h | A tiempo | P011 | 29,63 |
| 40 | 1.5 | **PRESUPUESTO** | 3d | 2025-06-09 | 2025-06-13 |  | 2025-06-12 | 2025-06-17 | 3d | 0d |  | Williams Opazo | 162h | Tarea futura | P011 |  |
| 41 | 1.5.1 | **DOCUMENTOS** | 3d | 2025-06-09 | 2025-06-13 |  | 2025-06-12 | 2025-06-17 | 3d | 0d |  | Williams Opazo | 135h | Tarea futura | P011 |  |
| 42 | 1.5.1.1 | APU - Generales | 3d | 2025-06-09 | 2025-06-13 | 15, 28, 35 | 2025-06-12 | 2025-06-17 | 3d | 0d |  | Williams Opazo | 27h | Tarea futura | P011 |  |
| 43 | 1.5.1.2 | Itemizado Presupeusto Alternativa A | 3d | 2025-06-09 | 2025-06-13 | 15, 28, 35 | 2025-06-12 | 2025-06-17 | 3d | 0d |  | Williams Opazo | 27h | Tarea futura | P011 |  |
| 44 | 1.5.1.3 | Itemizado Presupeusto Alternativa B | 3d | 2025-06-09 | 2025-06-13 | 15, 28, 35 | 2025-06-12 | 2025-06-17 | 3d | 0d |  | Williams Opazo | 27h | Tarea futura | P011 |  |
| 45 | 1.5.1.4 | Programa de Ejecucion - Plazo Estimado | 3d | 2025-06-09 | 2025-06-13 | 15, 28, 35 | 2025-06-12 | 2025-06-17 | 3d | 0d |  | Williams Opazo | 27h | Tarea futura | P011 |  |
| 46 | 1.6 | **TOPOGRAFIA** | 1d | 2025-06-02 | 2025-06-03 |  | 2025-06-02 | 2025-06-02 | 0d | 7d |  | Neil Flores | 36h | A tiempo | P011 | 88,89 |
| 47 | 1.6.1 | **ANTECEDENTE** | 1d | 2025-06-02 | 2025-06-03 |  | 2025-06-02 | 2025-06-02 | 0d | 7d |  | Neil Flores | 27h | A tiempo | P011 | 88,89 |
| 48 | 1.6.1.1 | Plano Planta Topografica Situacion Existente | 1d | 2025-06-02 | 2025-06-03 |  | 2025-06-02 | 2025-06-02 | 0d | 7d |  | Neil Flores | 9h | A tiempo | P011 | 88,89 |
| 49 | 1.6.1.2 | Secciones Perfiles Topograficos Situacion Existente | 1d | 2025-06-02 | 2025-06-03 |  | 2025-06-02 | 2025-06-02 | 0d | 7d |  | Neil Flores | 9h | A tiempo | P011 | 88,89 |
